# NBIA 5.0

Schedule from MS Project, 2010-09-27 to 2011-01-06, A marks actual dates.
NCI

## Calendars

- Standard: Mon-Fri 08:00-12:00, 13:00-17:00; Sat-Sun off. Exceptions (off unless hours are given): 2010-11-25 to 2010-11-26, 2010-12-24, 2010-12-27 to 2010-12-31.

## Resources

| Resource |
| --- |
| Eric |
| Jim |
| 3 |
| Qinyan |
| Quy |
| Anna |
| Prakash |
| Eric2 |
| Brian |

## Schedule

| ID | WBS | Task | Type | Duration | Start | Finish | Predecessors | Complete | Total slack | Constraint | Resources | Work | Actual work |
| --- | --- | --- | --- | --- | --- | --- | --- | --- | --- | --- | --- | --- | --- |
| 1 | 1 | Ivy Repository Migration |  | 1w | 2010-09-27 A | 2010-10-01 A |  | 100% |  |  | Eric | 40h | 40h |
| 3 | 2 | **Data Access Enhancements** |  | 28d | 2010-10-04 A | 2010-11-10 A |  | 100% |  |  |  | 304h | 304h |
| 4 | 2.1 | Split webapp dao-business logic |  | 1w | 2010-10-04 A | 2010-10-08 A |  | 100% |  |  | Eric | 40h | 40h |
| 5 | 2.2 | Capture baseline benchmarks |  | 1w | 2010-10-04 A | 2010-10-08 A |  | 100% |  |  | Jim | 40h | 40h |
| 6 | 2.3 | Introduce Spring data access into CTP |  | 2w | 2010-10-04 A | 2010-10-15 A |  | 100% |  |  | Jim | 80h | 80h |
| 7 | 2.4 | Post-Spring Benchmarks |  | 2d | 2010-10-18 A | 2010-10-19 A | 6 | 100% |  |  | Jim | 16h | 16h |
| 8 | 2.5 | CTP upgrade to X42 |  | 1w | 2010-10-20 A | 2010-10-26 A |  | 100% |  |  | Jim | 40h | 40h |
| 9 | 2.6 | Introduce Spring data access into webapp |  | 2w | 2010-10-11 A | 2010-10-22 A | 4 | 100% |  |  | Jim | 80h | 80h |
| 10 | 2.7 | Evaluate possibility of merging CTP-webapp data access |  | 1d | 2010-11-10 A | 2010-11-10 A |  | 100% |  |  | Jim | 8h | 8h |
| 12 | 3 | **Oracle Support** |  | 25d | 2010-10-11 A | 2010-11-12 A |  | 100% |  |  |  | 280h | 280h |
| 13 | 3.1 | Translate Schema |  | 2w | 2010-10-11 A | 2010-10-22 A |  | 100% |  |  | Eric | 80h | 80h |
| 14 | 3.2 | Setup/Request new Oracle instance with migration |  | 2w | 2010-10-25 A | 2010-11-05 A | 13 | 100% |  |  | Eric2 | 80h | 80h |
| 15 | 3.3 | Translate custom SQL in Hibernate mappings |  | 1w | 2010-10-25 A | 2010-10-29 A |  | 100% |  |  | Eric | 40h | 40h |
| 16 | 3.4 | Setup Oracle-specific Liquibase configuration |  | 2d | 2010-11-01 A | 2010-11-02 A |  | 100% |  |  | Eric | 16h | 16h |
| 17 | 3.5 | Custom SQL in patient search |  | 2d | 2010-11-03 A | 2010-11-04 A |  | 100% |  |  | Eric | 16h | 16h |
| 18 | 3.6 | Custom SQL in submission history |  | 2d | 2010-11-05 A | 2010-11-08 A |  | 100% |  |  | Eric | 16h | 16h |
| 19 | 3.7 | Deployment Scripts and GUI Installer |  | 4d | 2010-11-09 A | 2010-11-12 A | 18 | 100% |  |  | Eric | 32h | 32h |
| 21 | 4 | **Ultrasound search (Round 1)** |  | 37d | 2010-09-27 A | 2010-11-16 A |  | 100% |  |  |  | 296h | 296h |
| 22 | 4.1 | General Research |  | 1w | 2010-09-27 A | 2010-10-01 A |  | 100% |  |  | Qinyan | 40h | 40h |
| 23 | 4.2 | Map SME requirements to concrete DICOM tags and wireframe |  | 2w | 2010-10-04 A | 2010-10-15 A |  | 100% |  |  | Qinyan | 80h | 80h |
| 24 | 4.3 | Customize Classic Search UI to include US fields |  | 1w | 2010-10-18 A | 2010-10-22 A |  | 100% |  |  | Qinyan | 40h | 40h |
| 25 | 4.4 | Customize view series page to handle ultrasound |  | 2w | 2010-10-25 A | 2010-11-05 A |  | 100% |  |  | Qinyan | 80h | 80h |
| 26 | 4.5 | Map DICOM tags to NBIA internal domain model (includes code changes) |  | 7d | 2010-11-08 A | 2010-11-16 A |  | 100% |  |  | Qinyan | 56h | 56h |
| 28 | 5 | ****** SCOPE NAILED DOWN ****** | milestone | 0d | 2010-09-27 | 2010-09-27 |  |  | 66d |  |  |  |  |
| 30 | 6 | HL7 v3 Training |  | 2d | 2010-11-15 A | 2010-11-16 A |  | 100% |  | must start on 2010-11-15 | Eric | 16h | 16h |
| 32 | 7 | LIDC annotation of annotation re-generation |  | 5d | 2010-11-16 A | 2010-11-22 A |  | 100% |  | must start on 2010-11-16 | Qinyan | 40h | 40h |

| ID | WBS | Task | Type | Duration | Start | Finish | Predecessors | Complete | Remaining | Total slack | Free slack | Constraint | Resources | Work | Actual work |
| --- | --- | --- | --- | --- | --- | --- | --- | --- | --- | --- | --- | --- | --- | --- | --- |
| 34 | 8 | **Ultrasound Search Revisited (branch)** |  | 30d | 2010-11-16 A | 2011-01-06 |  | 48% | 15.73d | 0d |  |  |  | 336h | 164h |
| 35 | 8.1 | Deploy NBIA for Anna to experiment on |  | 1d | 2010-11-16 A | 2010-11-16 A |  | 100% |  |  |  |  | Jim | 8h | 8h |
| 36 | 8.2 | SME experimentation |  | 1w | 2010-11-17 A | 2010-11-23 A | 35 | 100% |  |  |  |  | Anna | 40h | 40h |
| 37 | 8.3 | Review SME feedback |  | 1d | 2010-11-24 A | 2010-11-24 A | 36 | 100% |  |  |  |  | Eric; Qinyan | 16h | 16h |
| 38 | 8.4 | Map DICOM tags to NBIA internal domain model (includes code changes) |  | 1w | 2010-11-29 A | 2010-12-03 A | 37 | 100% |  |  |  |  | Qinyan | 40h | 40h |
| 39 | 8.5 | Customize Classic Search UI to include US fields |  | 1w | 2010-12-06 A | 2010-12-10 | 38 | 50% | 0.5w | 8d | 0d |  | Qinyan | 40h | 20h |
| 40 | 8.6 | Remote Search impact |  | 1w | 2010-12-13 | 2010-12-17 | 39 |  |  | 8d |  |  | Qinyan | 40h |  |
| 41 | 8.7 | Add fields to dynamic search |  | 1d | 2010-12-06 | 2010-12-06 | 38 |  |  | 17d |  |  | Jim | 8h |  |
| 42 | 8.8 | Update submission module to index tags |  | 1w | 2010-12-07 | 2010-12-13 | 38 |  |  | 0d |  |  | Jim | 40h |  |
| 43 | 8.9 | **Update search to include ultrasound tags** |  | 8d | 2010-12-20 | 2011-01-06 |  |  |  | 0d |  |  |  | 64h |  |
| 44 | 8.9.1 | Code |  | 1w | 2010-12-20 | 2011-01-03 | 42 |  |  | 0d |  |  | Qinyan | 40h |  |
| 45 | 8.9.2 | Unit Test |  | 3d | 2011-01-04 | 2011-01-06 | 44 |  |  | 0d |  |  | Qinyan | 24h |  |
| 46 | 8.10 | Add modality info to web search UI |  | 1w | 2010-11-19 A | 2010-11-29 A |  | 100% |  |  |  | must start on 2010-11-19 | Prakash | 40h | 40h |
| 49 | 9 | **NBIA 5.0** |  | 23d? | 2010-11-12 A | 2010-12-16 |  | 58% | 9.55d? | 0d |  |  |  | 370.4h | 210.4h |
| 50 | 9.1 | Decouple deletion dao-business logic (Data Access Enhancements) |  | 1w | 2010-11-17 A | 2010-11-23 A |  | 100% |  |  |  | must start on 2010-11-17 | Jim | 40h | 40h |
| 52 | 9.2 | AHP3 Support |  | 14d? | 2010-11-16 A | 2010-12-07 A |  | 100% |  |  |  | must start on 2010-11-16 | Eric2 | 112h | 112h |
| 54 | 9.3 | Update Installation Guide |  | 1d | 2010-11-17 A | 2010-11-17 A |  | 100% |  |  |  | must start on 2010-11-17 | Eric | 4.4h | 4.4h |
| 55 | 9.4 | Appsupport Review of Installation Guide |  | 3d | 2010-11-19 A | 2010-11-23 A |  | 100% |  |  |  | must start on 2010-11-19 | Brian | 24h | 24h |
| 57 | 9.5 | Push Tag #1 to QA |  | 1h | 2010-11-12 A | 2010-11-12 A |  | 100% |  |  |  | start no earlier than 2010-11-12 | Eric | 1h | 1h |
| 59 | 9.6 | Prepare release notes |  | 4h | 2010-11-12 A | 2010-11-12 A | 57 | 100% |  |  |  |  | Eric | 4h | 4h |
| 61 | 9.7 | Push Tag #2 to QA |  | 1h | 2010-11-24 A | 2010-11-24 A | 50, 59 | 100% |  |  |  |  | Eric | 1h | 1h |
| 63 | 9.8 | QA Testing |  | 14d | 2010-11-16 | 2010-12-07 | 57 |  |  | 0d |  | must finish on 2010-12-07 | Quy | 112h |  |
| 65 | 9.9 | Migrate staging MySQL -> Oracle |  | 3d | 2010-12-03 A | 2010-12-07 A |  | 100% |  |  |  | must finish on 2010-12-07 | Eric | 24h | 24h |
| 66 | 9.10 | NBIA 5.0 Staging |  | 1d | 2010-12-10 | 2010-12-10 | 65 |  |  | 0d |  | must start on 2010-12-10 | Eric | 8h |  |
| 67 | 9.11 | Sanity Regression against staging |  | 1d? | 2010-12-13 | 2010-12-13 | 66 |  |  | 0d |  |  | Quy; Eric | 16h |  |
| 68 | 9.12 | Order AppScan on staging | milestone | 0d | 2010-12-13 | 2010-12-13 | 67 |  |  | 0d |  |  | Eric |  |  |
| 70 | 9.13 | Migrate production MySQL -> Oracle |  | 2d | 2010-12-14 | 2010-12-15 | 68 |  |  | 0d |  |  | Eric | 16h |  |
| 72 | 9.14 | NBIA 5.0 Production |  | 1d | 2010-12-16 | 2010-12-16 | 70, 68 |  |  | 0d |  | must start on 2010-12-16 | Eric | 8h |  |

| ID | WBS | Task | Duration | Start | Finish | Predecessors | Complete | Remaining | Total slack | Free slack | Constraint | Resources | Work | Actual work |
| --- | --- | --- | --- | --- | --- | --- | --- | --- | --- | --- | --- | --- | --- | --- |
| 74 | 10 | **RSNA (Jim)** | 5d | 2010-11-29 A | 2010-12-03 A |  | 100% |  |  |  |  |  | 40h | 40h |
| 75 | 10.1 | CTP meeting with John | 1d | 2010-11-29 A | 2010-11-29 A |  | 100% |  |  |  | must start on 2010-11-29 | Jim | 8h | 8h |
| 76 | 10.2 | Attend Session of Steamline Imaging Server | 1d | 2010-11-30 A | 2010-11-30 A | 75 | 100% |  |  |  |  | Jim | 8h | 8h |
| 77 | 10.3 | Check out google earth Imaging Technology | 1d | 2010-12-01 A | 2010-12-01 A | 76 | 100% |  |  |  |  | Jim | 8h | 8h |
| 78 | 10.4 | Research for Path Imaging Storage in DICOM format | 1d | 2010-12-02 A | 2010-12-02 A | 77 | 100% |  |  |  | start no earlier than 2010-11-29 | Jim | 8h | 8h |
| 79 | 10.5 | Attend session of Ultrasound Imaging to seek a better way to implement NBIA | 4h | 2010-12-03 A | 2010-12-03 A | 78 | 100% |  |  |  |  | Jim | 4h | 4h |
| 80 | 10.6 | Check out some products with Path Imaging Storage | 4h | 2010-12-03 A | 2010-12-03 A | 79 | 100% |  |  |  | finish no earlier than 2010-12-03 | Jim | 4h | 4h |
| 83 | 11 | **Bug Fixing** | 12d | 2010-11-17 | 2010-12-06 |  |  |  | 0d |  |  |  |  |  |
| 84 | 11.1 | Add warning text to GUI installer about potential to wipe out CTP storage system | 3h | 2010-11-17 | 2010-11-17 |  |  |  | 0d |  | must start on 2010-11-17 |  |  |  |
| 85 | 11.2 | GUI installer fails on upgrade from NBIA 4.4 | 2d | 2010-11-18 | 2010-11-19 |  |  |  | 0d |  | must start on 2010-11-18 |  |  |  |
| 86 | 11.3 | Zipping of download basket returns empty basket | 1d | 2010-11-19 | 2010-11-19 |  |  |  | 0d |  | must start on 2010-11-19 |  |  |  |
| 87 | 11.4 | GUI installer fails when doing install with MySQL | 4h | 2010-11-23 | 2010-11-23 |  |  |  | 0d |  | must start on 2010-11-23 |  |  |  |
| 88 | 11.5 | FTP downloads do not record the download the same way the HTTP and Download Mgr downloads do | 4d | 2010-12-01 | 2010-12-06 |  |  |  | 0d |  | must start on 2010-12-01 |  |  |  |
| 89 | 11.6 | FTP download that includes remote series fails | 2d | 2010-12-02 | 2010-12-03 |  |  |  | 0d |  | must start on 2010-12-02 |  |  |  |
| 90 | 11.7 | NCIA grid service port number updating from 21080 to 8080 | 2d | 2010-12-01 | 2010-12-02 |  |  |  | 0d |  | must start on 2010-12-01 |  |  |  |
| 91 | 11.8 | Upgrading NBIA 4.4 to 5.0 GUI Installation failed (AHP3 regression) | 1d | 2010-12-03 | 2010-12-03 |  |  |  | 0d |  | must start on 2010-12-03 |  |  |  |
| 93 | 12 | **External Model Harmonization** | 53d | 2010-09-27 A | 2010-12-10 |  | 43% | 30.29d | 0d |  |  |  | 56h | 24h |
| 94 | 12.1 | CBIIT Self-Study on DSR,metadata,etc. pt 1 | 2d | 2010-09-27 A | 2010-09-28 A |  | 100% |  |  |  | must start on 2010-11-29 | Prakash | 16h | 16h |
| 95 | 12.2 | CBIIT Self-Study on DSR,metadata,etc. pt 2 | 1w | 2010-12-06 A | 2010-12-10 |  | 20% | 0.8w | 0d |  | must start on 2010-12-06 | Prakash | 40h | 8h |
| 97 | 13 | **AIM Search Prototype** | 17d | 2010-12-01 A | 2010-12-23 |  | 54% | 7.79d | 4d |  |  |  | 144h | 78h |
| 98 | 13.1 | Search UI | 3d | 2010-12-01 A | 2010-12-03 A |  | 100% |  |  |  | must start on 2010-12-01 | Eric | 24h | 24h |
| 99 | 13.2 | **AIM Submission** | 9d | 2010-12-06 A | 2010-12-16 |  | 75% | 2.25d | 7d | 0d |  |  | 72h | 54h |
| 100 | 13.2.1 | Annotation Recognizer | 3d | 2010-12-06 A | 2010-12-08 A | 98 | 100% |  |  |  |  | Eric | 24h | 24h |
| 101 | 13.2.2 | AIM Parsing | 2d | 2010-12-09 A | 2010-12-10 A | 100 | 100% |  |  |  |  | Eric | 16h | 16h |
| 102 | 13.2.3 | Add relational tables | 1d | 2010-12-13 A | 2010-12-13 A | 101 | 100% |  |  |  |  | Eric | 8h | 8h |
| 103 | 13.2.4 | Data Access (domain, and DAO) | 3d | 2010-12-14 A | 2010-12-16 | 102 | 25% | 2.25d | 7d |  |  | Eric | 24h | 6h |
| 104 | 13.3 | Connect Search UI to backend | 1w | 2010-12-17 | 2010-12-23 | 99 |  |  | 4d |  |  | Eric | 40h |  |
| 105 | 13.4 | AIM de-identification configuration | 1d | 2010-12-17 | 2010-12-17 | 99 |  |  | 8d |  |  | Eric | 8h |  |

Notes:
- 76: Fake dependency here to make life easier
- 83: add subtask here for every bug fixed

| ID | WBS | Task | Duration | Start | Finish | Total slack |
| --- | --- | --- | --- | --- | --- | --- |
| 107 | 14 | **Vacations** | 1d? | 2010-09-27 | 2010-09-27 | 65d |
| 108 | 14.1 | Eric (11/26,12/13, 12/20 - ? ) | 1d? | 2010-09-27 | 2010-09-27 | 65d |
| 109 | 14.2 | Jim (11/26, 12/27-12/31) | 1d? | 2010-09-27 | 2010-09-27 | 65d |
| 110 | 14.3 | Qinyan (11/26, 12/27-12/31) | 1d? | 2010-09-27 | 2010-09-27 | 65d |
| 111 | 14.4 | Praskash (11/26, 12/29-12/31) | 1d? | 2010-09-27 | 2010-09-27 | 65d |
